# MealMate alfa

Schedule from MS Project, 2023-01-17 to 2023-04-21.

## Calendars

- Standard: Mon-Fri 09:00-13:00, 14:00-18:00; Sat-Sun off.

## Schedule

| ID | WBS | Task | Type | Duration | Start | Finish | Predecessors | Total slack |
| --- | --- | --- | --- | --- | --- | --- | --- | --- |
| 1 | 1 | **Project management** |  | 2d? | 2023-01-17 | 2023-01-18 |  | 0d |
| 2 | 1.1 | Project scope statement | manual | 1d? | 2023-01-17 | 2023-01-17 |  |  |
| 3 | 1.2 | WBS | manual | 1d? | 2023-01-17 | 2023-01-17 |  |  |
| 4 | 1.3 | Approved project management plan | manual | 1d? | 2023-01-18 | 2023-01-18 | 2, 3 |  |
| 5 | 2 | **Requirements** |  | 3d? | 2023-01-19 | 2023-01-23 |  | 0d |
| 6 | 2.1 | Software architecture document | manual | 1d? | 2023-01-19 | 2023-01-19 | 1 |  |
| 7 | 2.2 | **UI Design** |  | 2d? | 2023-01-20 | 2023-01-23 |  | 0d |
| 8 | 2.2.1 | Style definition | manual | 1d? | 2023-01-20 | 2023-01-20 | 6 |  |
| 9 | 2.2.2 | Mobile app design | manual | 1d? | 2023-01-23 | 2023-01-23 | 8 |  |
| 10 | 3 | **Infrastructure** |  | 2d? | 2023-01-20 | 2023-01-23 |  | 0d |
| 11 | 3.1 | Infrastructure specification | manual | 1d? | 2023-01-20 | 2023-01-20 | 6 |  |
| 12 | 3.2 | Infrastructure cost prediction | manual | 1d? | 2023-01-23 | 2023-01-23 | 11 |  |
| 13 | 4 | **Back-end** |  | 2d? | 2023-01-24 | 2023-01-25 |  | 0d |
| 14 | 4.1 | Media database | manual | 1d? | 2023-01-24 | 2023-01-24 | 10 |  |
| 15 | 4.2 | Client-management system | manual | 1d? | 2023-01-24 | 2023-01-24 | 10 |  |
| 16 | 4.3 | Authentication provider | manual | 1d? | 2023-01-24 | 2023-01-24 | 10 |  |
| 17 | 4.4 | Application logic implementation | manual | 1d? | 2023-01-25 | 2023-01-25 | 14, 15, 16 |  |
| 18 | 5 | **Front-end** |  | 1d? | 2023-01-24 | 2023-01-24 |  | 0d |
| 19 | 5.1 | Home page | manual | 1d? | 2023-01-24 | 2023-01-24 | 10 |  |
| 20 | 5.2 | Login page | manual | 1d? | 2023-01-24 | 2023-01-24 | 10 |  |
| 21 | 5.3 | Main page | manual | 1d? | 2023-01-24 | 2023-01-24 | 10 |  |
| 22 | 6 | **Test** |  | 1d? | 2023-01-26 | 2023-01-26 |  | 0d |
| 23 | 6.1 | Test GUI | manual | 1d? | 2023-01-26 | 2023-01-26 | 18 |  |
| 24 | 6.2 | Test App | manual | 1d? | 2023-01-26 | 2023-01-26 | 13, 18 |  |

| ID | WBS | Task | Type | Duration | Start | Finish | Predecessors |
| --- | --- | --- | --- | --- | --- | --- | --- |
| 25 | 7 | **Deployment** |  | 62d | 2023-01-26 | 2023-04-21 | 22 |
| 26 | 7.1 | Consegna ai prof. | manual | 1d? | 2023-01-26 | 2023-01-26 |  |
| 27 | 7.2 | Pubblicazione su Appstore | manual | 1d? | 2023-01-26 | 2023-01-26 |  |
